How a schedule from MS Project changed from version to version. A marks actual dates.

## Version 1 (saved 2017-07-13)

Note of the change: Cronograma de proyecto 1.3

| ID | WBS | Task | Duration | Start | Finish | Predecessors | Complete | Total float |
| --- | --- | --- | --- | --- | --- | --- | --- | --- |
| 1 | 1 | **Cronograma de Proyecto Interfase VOIP 1.5** | 50.06d? | 2017-05-10 09:00 A | 2017-07-19 09:30 |  | 50% | 0d |
| 2 | 1.1 | **Proceso de gestion** | 14.25d | 2017-05-10 09:00 A | 2017-05-30 11:00 |  | 89% | 0d |
| 3 | 1.1.1 | **Inicio** | 0.62d | 2017-05-10 09:00 A | 2017-05-10 16:00 A |  | 100% |  |
| 4 |  | Revision de metodologia de trabajo | 5h | 2017-05-10 09:00 A | 2017-05-10 16:00 A |  | 100% |  |
| 5 | 1.1.2 | **Planificacion del plan de proyecto** | 5.25d | 2017-05-10 16:00 A | 2017-05-17 18:00 A | 3 | 100% |  |
| 6 | 1.1.2.1 | **Elaboracion del plan de proyecto** | 3.88d | 2017-05-10 16:00 A | 2017-05-16 13:00 A |  | 100% |  |
| 7 |  | Definir Nombre del Proyecto | 2h | 2017-05-10 16:00 A | 2017-05-10 18:00 A |  | 100% |  |
| 8 |  | Definir Objetivos de Proyecto | 4h | 2017-05-10 18:00 A | 2017-05-11 12:00 A | 7 | 100% |  |
| 9 |  | Elaboración de Cronograma Detallado | 4h | 2017-05-11 12:00 A | 2017-05-11 18:00 A | 8 | 100% |  |
| 10 |  | Gestión de Comunicaciones | 3h | 2017-05-11 18:00 A | 2017-05-12 11:00 A | 9 | 100% |  |
| 11 |  | Necesidades del Proyecto | 3h | 2017-05-12 11:00 A | 2017-05-12 16:00 A | 10 | 100% |  |
| 12 |  | Identificación de Riesgos del Proyecto | 3h | 2017-05-12 16:00 A | 2017-05-12 19:00 A | 11 | 100% |  |
| 13 |  | Elaborar Documento de Riesgos del Proyecto | 3h | 2017-05-15 09:00 A | 2017-05-15 12:00 A | 12 | 100% |  |
| 14 |  | Elaborar Documento Plan de Proyecto | 8h | 2017-05-15 12:00 A | 2017-05-16 12:00 A | 13 | 100% |  |
| 15 |  | Traspaso de Información | 1h | 2017-05-16 12:00 A | 2017-05-16 13:00 A | 14 | 100% |  |
| 16 | 1.1.2.2 | **Revision interna del plan de proyecto** | 0.62d | 2017-05-16 15:00 A | 2017-05-17 10:00 A | 6 | 100% |  |
| 17 |  | Revisión de Plan de Proyecto por el equipo del Proyecto | 1h | 2017-05-16 15:00 A | 2017-05-16 16:00 A |  | 100% |  |
| 18 |  | Ajustes al Plan de Proyecto | 1h | 2017-05-16 16:00 A | 2017-05-16 17:00 A | 17 | 100% |  |
| 19 |  | Elaborar Acta de REVISION INTERNA del PLAN DE PROYECTO | 2h | 2017-05-16 17:00 A | 2017-05-16 19:00 A | 18 | 100% |  |
| 20 |  | Traspaso de Información | 1h | 2017-05-17 09:00 A | 2017-05-17 10:00 A | 19 | 100% |  |
| 21 | 1.1.2.3 | **Gestion de la configuracion** | 0.75d | 2017-05-17 10:00 A | 2017-05-17 18:00 A | 16 | 100% |  |
| 22 |  | Establecer Repositorio de Datos | 3h | 2017-05-17 10:00 A | 2017-05-17 13:00 A |  | 100% |  |
| 23 |  | Asignar Gestor de Configuración | 2h | 2017-05-17 15:00 A | 2017-05-17 17:00 A | 22 | 100% |  |
| 24 |  | Elaborar Solicitud de Accesos | 1h | 2017-05-17 17:00 A | 2017-05-17 18:00 A | 23 | 100% |  |
| 25 | 1.1.3 | **Ejecucion, Seguimiento y control** | 6.75d | 2017-05-17 18:00 A | 2017-05-26 16:00 A | 5 | 100% |  |
| 26 | 1.1.3.1 | **Desarrollo del Área de Proceso PP- PMC** | 1.88d | 2017-05-17 18:00 A | 2017-05-19 17:00 A |  | 100% |  |
| 27 |  | Elaborar Plantilla de Reunión Externa Mensual | 2h | 2017-05-17 18:00 A | 2017-05-18 10:00 A |  | 100% |  |
| 28 |  | Elaborar Plantilla de Gestion de Riesgos | 2h | 2017-05-18 10:00 A | 2017-05-18 12:00 A | 27 | 100% |  |
| 29 |  | Elaborar Plantilla de Informe de Avances Quincenales | 2h | 2017-05-18 12:00 A | 2017-05-18 16:00 A | 28 | 100% |  |
| 30 |  | Elaborar Plantillas de Actas de Reunión Interna Quincenal | 2h | 2017-05-18 16:00 A | 2017-05-18 18:00 A | 29 | 100% |  |
| 31 |  | Elaborar Formato de Aceptación de Entregables | 2h | 2017-05-18 18:00 A | 2017-05-19 10:00 A | 30 | 100% |  |
| 32 |  | Elaborar Documento Gestión de Procesos PP-PMC | 4h | 2017-05-19 10:00 A | 2017-05-19 16:00 A | 31 | 100% |  |
| 33 |  | Traspaso de Información | 1h | 2017-05-19 16:00 A | 2017-05-19 17:00 A | 32 | 100% |  |
| 34 | 1.1.3.2 | **Desarrollo del Área de Proceso REQM** | 1.12d | 2017-05-19 17:00 A | 2017-05-22 18:00 A | 26 | 100% |  |
| 35 |  | Elaborar Formato de Solicitud a Cambios a Requerimientos | 2h | 2017-05-19 17:00 A | 2017-05-19 19:00 A |  | 100% |  |
| 36 |  | Elaborar Formato de Matriz de Trazabilidad de Requerimientos | 2h | 2017-05-22 09:00 A | 2017-05-22 11:00 A | 35 | 100% |  |
| 37 |  | Elaborar Formato de Registro de Cambios a Requerimientos | 2h | 2017-05-22 11:00 A | 2017-05-22 13:00 A | 36 | 100% |  |
| 38 |  | Elaborar Documento de Proceso de Gestión de cambios de Requerimientos | 2h | 2017-05-22 15:00 A | 2017-05-22 17:00 A | 37 | 100% |  |
| 39 |  | Traspaso de Información | 1h | 2017-05-22 17:00 A | 2017-05-22 18:00 A | 38 | 100% |  |
| 40 | 1.1.3.3 | **Desarrollo del Área de Proceso PPQA** | 1.12d | 2017-05-22 18:00 A | 2017-05-23 19:00 A | 34 | 100% |  |
| 41 |  | Elaborar Formato de CheckList de Aseguramiento de la Calidad | 2h | 2017-05-22 18:00 A | 2017-05-23 10:00 A |  | 100% |  |
| 42 |  | Elaborar Herramienta de Gestión de Aseguramiento de la Calidad | 2h | 2017-05-23 10:00 A | 2017-05-23 12:00 A | 41 | 100% |  |
| 43 |  | Elaborar Matriz de Seguimiento de Proyecto Interno | 2h | 2017-05-22 18:00 A | 2017-05-23 10:00 A |  | 100% |  |
| 44 |  | Elaborar documento de Proceso de Aseguramiento de la calidad | 6h | 2017-05-23 10:00 A | 2017-05-23 18:00 A | 43 | 100% |  |
| 45 |  | Traspaso de Información | 1h | 2017-05-23 18:00 A | 2017-05-23 19:00 A | 44 | 100% |  |
| 46 | 1.1.3.4 | **Desarrollo del Área de Proceso MA** | 1.75d | 2017-05-24 09:00 A | 2017-05-25 17:00 A | 40 | 100% |  |
| 47 |  | Elaborar Formato de Ficha de Métricas de Numero de N Conformidades de Producto | 3h | 2017-05-24 09:00 A | 2017-05-24 12:00 A |  | 100% |  |
| 48 |  | Elaborar Formato de Ficha de Métricas de Índice de Cambios de Ítems de Configuración | 3h | 2017-05-24 12:00 A | 2017-05-24 17:00 A | 47 | 100% |  |
| 49 |  | Elaborar Formato de Ficha de Métricas de Volatilidad de Requerimientos | 3h | 2017-05-24 17:00 A | 2017-05-25 10:00 A | 48 | 100% |  |
| 50 |  | Elaborar Formato de Ficha de Métricas de Exposición al Riesgo | 3h | 2017-05-25 10:00 A | 2017-05-25 13:00 A | 49 | 100% |  |
| 51 |  | Elaborar Formato de Tablero de Métricas | 2h | 2017-05-25 15:00 A | 2017-05-25 17:00 A | 50 | 100% |  |
| 52 |  | Traspaso de Información | 1h | 2017-05-24 09:00 A | 2017-05-24 10:00 A |  | 100% |  |
| 53 | 1.1.3.5 | **Desarrollo del Área de Proceso CM** | 0.88d | 2017-05-25 17:00 A | 2017-05-26 16:00 A | 46 | 100% |  |
| 54 |  | Elaborar Formato de Registro de Ítems de Configuración | 2h | 2017-05-25 17:00 A | 2017-05-25 19:00 A |  | 100% |  |
| 55 |  | Elaborar Formato de Solicitud de Accesos | 2h | 2017-05-26 09:00 A | 2017-05-26 11:00 A | 54 | 100% |  |
| 56 |  | Elaborar Documento de Proceso de Gestión de Configuración | 2h | 2017-05-26 11:00 A | 2017-05-26 13:00 A | 55 | 100% |  |
| 57 |  | Traspaso de Información | 1h | 2017-05-26 15:00 A | 2017-05-26 16:00 A | 56 | 100% |  |
| 58 | 1.1.4 | **Cierre** | 1.62d | 2017-05-26 16:00 | 2017-05-30 11:00 | 25 |  | 0d |
| 59 | 1.1.4.1 | **Acta de aceptacion y cierre de Proyecto** | 1.12d | 2017-05-26 16:00 | 2017-05-29 17:00 |  |  | 0d |
| 60 |  | Revisión de Entregables del Proyecto | 5h | 2017-05-26 16:00 | 2017-05-29 11:00 |  |  | 0d |
| 61 |  | Elaboración del Acta de Aceptación y Cierre del Proyecto | 3h | 2017-05-29 11:00 | 2017-05-29 16:00 | 60 |  | 0d |
| 62 |  | Traspaso de Información | 1h | 2017-05-29 16:00 | 2017-05-29 17:00 | 61 |  | 0d |
| 63 | 1.1.4.2 | **Relatorio de Proyecto** | 0.5d | 2017-05-29 17:00 | 2017-05-30 11:00 | 59 |  | 0d |
| 64 |  | Elaborar Relatorio de Proyecto | 1h | 2017-05-29 17:00 | 2017-05-29 18:00 |  |  | 0d |
| 65 |  | Revisión y ajustes de Relatorio por el equipo del Proyecto | 1h | 2017-05-29 18:00 | 2017-05-29 19:00 | 64 |  | 0d |
| 66 |  | Revisión de Relatorio | 1h | 2017-05-30 09:00 | 2017-05-30 10:00 | 65 |  | 0d |
| 67 |  | Traspaso de Información | 1h | 2017-05-30 10:00 | 2017-05-30 11:00 | 66 |  | 0d |
| 68 | 1.2 | **Proceso de ingenieria** | 16.62d? | 2017-05-30 11:00 A | 2017-06-21 18:00 | 2 | 21% | 19.19d |
| 69 | 1.2.1 | **Requerimientos** | 1.5d | 2017-05-30 11:00 A | 2017-05-31 17:00 A |  | 100% |  |
| 70 |  | Desarrollo de plan de proyecto | 6h | 2017-05-30 11:00 A | 2017-05-30 19:00 A |  | 100% |  |

| ID | WBS | Task | Duration | Start | Finish | Predecessors | Complete | Total float |
| --- | --- | --- | --- | --- | --- | --- | --- | --- |
| 71 |  | Elaboracion de matriz de trazabilidad de requerimiento | 2h | 2017-05-31 09:00 A | 2017-05-31 11:00 A | 70 | 100% |  |
| 72 |  | Elaborar lista maestra de requerimientos | 2h | 2017-05-31 11:00 A | 2017-05-31 13:00 A | 71 | 100% |  |
| 73 |  | Trapaso de informacion | 2h | 2017-05-31 15:00 A | 2017-05-31 17:00 A | 72 | 100% |  |
| 74 | 1.2.2 | **Analisis** | 1.25d | 2017-05-31 17:00 A | 2017-06-01 19:00 | 69 | 10% | 0d |
| 75 |  | Matriz de trazabilidad de requerimientos (Actualizada) | 1h | 2017-05-31 17:00 A | 2017-05-31 18:00 A |  | 100% |  |
| 76 |  | Elaborar documento de analisis | 3h | 2017-05-31 18:00 | 2017-06-01 11:00 | 75 |  | 0d |
| 77 | 1.2.2.3 | **Casos de uso** | 0.75d | 2017-06-01 11:00 | 2017-06-01 19:00 | 76 |  | 0d |
| 78 |  | Caso de uso de cliente | 2h | 2017-06-01 11:00 | 2017-06-01 13:00 |  |  | 0d |
| 79 |  | Caso de uso de distribuidor | 2h | 2017-06-01 15:00 | 2017-06-01 17:00 | 78 |  | 0d |
| 80 |  | Caso de uso de administrador | 2h | 2017-06-01 17:00 | 2017-06-01 19:00 | 79 |  | 0d |
| 81 | 1.2.3 | **Diseño** | 0.62d | 2017-06-02 09:00 | 2017-06-02 16:00 | 74 |  | 0d |
| 82 |  | Elaborar documento de diseño | 3h | 2017-06-02 09:00 | 2017-06-02 12:00 |  |  | 0d |
| 83 |  | Matriz de trazabilidad de requerimientos (Actualizada) | 1h | 2017-06-02 12:00 | 2017-06-02 13:00 | 82 |  | 0d |
| 84 |  | Traspaso de informacion | 1h | 2017-06-02 15:00 | 2017-06-02 16:00 | 83 |  | 0d |
| 85 | 1.2.4 | **Construccion** | 10d? | 2017-06-02 16:00 A | 2017-06-16 16:00 | 81 | 19% | 0d |
| 86 |  | Matriz de trazabilidad de requerimientos (Actualizada) | 1d? | 2017-06-02 16:00 | 2017-06-05 16:00 |  |  |  |
| 87 | 1.2.4.2 | **Modulo de clientes** | 2.5d | 2017-06-02 16:00 A | 2017-06-07 10:00 A |  | 100% |  |
| 88 |  | Reporte de llamadas | 1d | 2017-06-02 16:00 A | 2017-06-05 16:00 A |  | 100% |  |
| 89 |  | Reporte de recargas | 1d | 2017-06-05 16:00 A | 2017-06-06 16:00 A | 88 | 100% |  |
| 90 |  | Reporte de Anexos | 4h | 2017-06-06 16:00 A | 2017-06-07 10:00 A | 89 | 100% |  |
| 91 | 1.2.4.3 | **Modulo Distribuidor** | 3d | 2017-06-07 10:00 | 2017-06-12 10:00 | 87 |  | 0d |
| 92 |  | Mantenimientos de Clientes | 1d | 2017-06-07 10:00 | 2017-06-08 10:00 |  |  | 0d |
| 93 |  | Mantenimiento de Anexos | 1d | 2017-06-08 10:00 | 2017-06-09 10:00 | 92 |  | 0d |
| 94 |  | Mantenimiento de Recargas de Clientes | 1d | 2017-06-09 10:00 | 2017-06-12 10:00 | 93 |  | 0d |
| 95 |  | Reporte de Recargas | 2d | 2017-06-07 10:00 | 2017-06-09 10:00 |  |  | 1d |
| 96 | 1.2.4.4 | **Modulo Administrador** | 4.5d | 2017-06-12 10:00 | 2017-06-16 16:00 | 91 |  | 0d |
| 97 |  | Reporte de Recargas | 5h | 2017-06-12 10:00 | 2017-06-12 17:00 |  |  | 0d |
| 98 |  | Mantenimiento de Distribuidores | 7h | 2017-06-12 17:00 | 2017-06-13 16:00 | 97 |  | 0d |
| 99 |  | Reporte de Anexos | 8h | 2017-06-13 16:00 | 2017-06-14 16:00 | 98 |  | 0d |
| 100 |  | Mantenimiento de Tarifas | 8h | 2017-06-14 16:00 | 2017-06-15 16:00 | 99 |  | 0d |
| 101 |  | Mantenimiento de Recargas de Distribuidores | 8h | 2017-06-15 16:00 | 2017-06-16 16:00 | 99, 100 |  | 0d |
| 102 | 1.2.5 | **Pruebas generales** | 2.25d? | 2017-06-16 16:00 A | 2017-06-20 18:00 | 96 | 12% | 19.19d |
| 103 |  | Matriz de trazabilidad de requerimientos (Final) | 1d? | 2017-06-16 16:00 | 2017-06-19 16:00 |  |  |  |
| 104 | 1.2.5.2 | **Documento de pruebas Funcionales** | 1.12d | 2017-06-16 16:00 A | 2017-06-19 17:00 |  | 33% | 19.19d |
| 105 |  | Modulo cliente | 3h | 2017-06-16 16:00 A | 2017-06-16 19:00 A |  | 100% |  |
| 106 |  | Modulo distribuidor | 3h | 2017-06-19 09:00 | 2017-06-19 12:00 | 105 |  | 19.19d |
| 107 |  | Modulo administrador | 3h | 2017-06-19 12:00 | 2017-06-19 17:00 | 106 |  | 19.19d |
| 108 | 1.2.5.3 | **Documento de Pruebas de Sistemas** | 1.12d | 2017-06-19 17:00 | 2017-06-20 18:00 | 104 |  | 19.19d |
| 109 |  | Modulo cliente | 3h | 2017-06-19 17:00 | 2017-06-20 10:00 |  |  | 19.19d |
| 110 |  | Modulo distribuidor | 3h | 2017-06-20 10:00 | 2017-06-20 13:00 | 109 |  | 19.19d |
| 111 |  | Modulo administrador | 3h | 2017-06-20 15:00 | 2017-06-20 18:00 | 110 |  | 19.19d |
| 112 | 1.2.6 | **Implementacion** | 1d | 2017-06-20 18:00 | 2017-06-21 18:00 | 102 |  | 19.19d |
| 113 |  | Software producido (Final) | 4h | 2017-06-20 18:00 | 2017-06-21 12:00 |  |  | 19.19d |
| 114 |  | Manual de usuario | 4h | 2017-06-21 12:00 | 2017-06-21 18:00 | 113 |  | 19.19d |
| 115 | 1.2.6.3 | **Despliegue** | 0.88d | 2017-06-20 18:00 | 2017-06-21 17:00 |  |  | 19.31d |
| 116 |  | Manual de pase a produccion | 3h | 2017-06-20 18:00 | 2017-06-21 11:00 |  |  | 19.31d |
| 117 |  | Manual de instalacion | 4h | 2017-06-21 11:00 | 2017-06-21 17:00 | 116 |  | 19.31d |
| 118 | 1.3 | **Induccion personal** | 1d | 2017-07-10 16:00 A | 2017-07-11 16:00 A | 68 | 100% |  |
| 119 |  | Definicion de personal a capacitar | 2h | 2017-07-10 16:00 A | 2017-07-10 18:00 A |  | 100% |  |
| 120 |  | Realizar capacitacion | 4h | 2017-07-10 18:00 A | 2017-07-11 12:00 A | 119 | 100% |  |
| 121 |  | Resolver dudas adicionales | 2h | 2017-07-11 12:00 A | 2017-07-11 16:00 A | 120 | 100% |  |
| 122 | 1.4 | **Procesamiento de Aseguramiento de la calidad de proyecto** | 0.38d | 2017-07-11 16:00 A | 2017-07-11 19:00 | 118 | 33% | -0.25d |
| 123 | 1.4.1 | **Primera revision** | 0.12d | 2017-07-11 16:00 A | 2017-07-11 17:00 A |  | 100% |  |
| 124 |  | Elaboracion de CheckList | 1h | 2017-07-11 16:00 A | 2017-07-11 17:00 A |  | 100% |  |
| 125 | 1.4.2 | **Segunda revision** | 0.12d | 2017-07-11 17:00 | 2017-07-11 18:00 | 123 |  | -38d |
| 126 |  | Elaboracion de CheckList | 1h | 2017-07-11 17:00 | 2017-07-11 18:00 |  |  | -38d |
| 127 | 1.4.3 | **Tercera revision** | 0.12d | 2017-07-11 18:00 | 2017-07-11 19:00 | 125 |  | -38d |
| 128 |  | Elaboracion de CheckList | 1h | 2017-07-11 18:00 | 2017-07-11 19:00 |  |  | -38d |
| 129 | 1.5 | **Reuniones Internas** | 42.12d | 2017-05-19 09:00 A | 2017-07-18 10:00 | 122 | 67% | 0d |
| 130 | 1.5.1 | **reunion quincenal 1** | 0.12d | 2017-05-19 09:00 A | 2017-05-19 10:00 A |  | 100% |  |
| 131 |  | Acta de reunion | 1h | 2017-05-19 09:00 A | 2017-05-19 10:00 A |  | 100% |  |
| 132 | 1.5.2 | **reunion quincenal 2** | 0.12d | 2017-06-02 09:00 A | 2017-06-02 10:00 A | 130 | 100% |  |
| 133 |  | Acta de reunion | 1h | 2017-06-02 09:00 A | 2017-06-02 10:00 A |  | 100% |  |
| 134 | 1.5.3 | **reunion quincenal 3** | 0.12d | 2017-06-16 09:00 A | 2017-06-16 10:00 A | 132 | 100% |  |
| 135 |  | Acta de reunion | 1h | 2017-06-16 09:00 A | 2017-06-16 10:00 A |  | 100% |  |
| 136 | 1.5.4 | **reunion quincenal 4** | 0.12d | 2017-06-30 09:00 A | 2017-06-30 10:00 A | 134 | 100% |  |
| 137 |  | Acta de reunion | 1h | 2017-06-30 09:00 A | 2017-06-30 10:00 A |  | 100% |  |
| 138 | 1.5.5 | **reunion quincenal 5** | 0.12d | 2017-07-14 09:00 | 2017-07-14 10:00 |  |  |  |
| 139 |  | Acta de reunion | 1h | 2017-07-14 09:00 | 2017-07-14 10:00 |  |  | 0d |
| 140 | 1.5.6 | **reunion quincenal 6** | 0.12d | 2017-07-18 09:00 | 2017-07-18 10:00 |  |  |  |

| ID | WBS | Task | Duration | Start | Finish | Predecessors | Complete | Total float |
| --- | --- | --- | --- | --- | --- | --- | --- | --- |
| 141 |  | Acta de reunion | 1h | 2017-07-18 09:00 | 2017-07-18 10:00 |  |  | 0d |
| 142 | 1.6 | **Reuniones externas** | 40.06d | 2017-05-24 09:00 A | 2017-07-19 09:30 | 129 | 67% | 0d |
| 143 | 1.6.1 | **Primera reunion** | 0.06d | 2017-05-24 09:00 A | 2017-05-24 09:30 A |  | 100% |  |
| 144 |  | Acta de reunion y obbservaciones | 0.5h | 2017-05-24 09:00 A | 2017-05-24 09:30 A |  | 100% |  |
| 145 | 1.6.2 | **Segunda reunion** | 0.06d | 2017-06-19 09:00 A | 2017-06-19 09:30 A | 143 | 100% |  |
| 146 |  | Acta de reunion y obbservaciones | 0.5h | 2017-06-19 09:00 A | 2017-06-19 09:30 A |  | 100% |  |
| 147 | 1.6.3 | **tercera reunion** | 0.06d | 2017-07-19 09:00 | 2017-07-19 09:30 |  |  |  |
| 148 |  | Acta de reunion y obbservaciones | 0.5h | 2017-07-19 09:00 | 2017-07-19 09:30 |  |  | 0d |

## Version 2 (saved 2017-07-19)

Note of the change: Cronograma de proyecto 1.5

Last finish stays 2017-07-19. Complete tasks 63 → 78.

Removed: 127 Tercera revision; 128 Elaboracion de CheckList

Changed:

| ID | Task | Start | Finish | Duration | Complete | Total float |
| --- | --- | --- | --- | --- | --- | --- |
| 1 | **Cronograma de Proyecto Interfase VOIP 1.5** |  |  | 50.06d? → 50.06d | 50% → 67% |  |
| 2 | **Proceso de gestion** |  |  |  | 89% → 97% |  |
| 58 | **Cierre** | 2017-05-26 16:00 A |  |  | 0% → 69% |  |
| 59 | **Acta de aceptacion y cierre de Proyecto** | 2017-05-26 16:00 A | 2017-05-29 17:00 A |  | 0% → 100% | 0d → none |
| 60 | Revisión de Entregables del Proyecto | 2017-05-26 16:00 A | 2017-05-29 11:00 A |  | 0% → 100% | 0d → none |
| 61 | Elaboración del Acta de Aceptación y Cierre del Proyecto | 2017-05-29 11:00 A | 2017-05-29 16:00 A |  | 0% → 100% | 0d → none |
| 62 | Traspaso de Información | 2017-05-29 16:00 A | 2017-05-29 17:00 A |  | 0% → 100% | 0d → none |
| 68 | **Proceso de ingenieria** |  |  | 16.62d? → 16.62d | 21% → 43% |  |
| 74 | **Analisis** |  | 2017-06-01 19:00 A |  | 10% → 100% | 0d → none |
| 76 | Elaborar documento de analisis | 2017-05-31 18:00 A | 2017-06-01 11:00 A |  | 0% → 100% | 0d → none |
| 77 | **Casos de uso** | 2017-06-01 11:00 A | 2017-06-01 19:00 A |  | 0% → 100% | 0d → none |
| 78 | Caso de uso de cliente | 2017-06-01 11:00 A | 2017-06-01 13:00 A |  | 0% → 100% | 0d → none |
| 79 | Caso de uso de distribuidor | 2017-06-01 15:00 A | 2017-06-01 17:00 A |  | 0% → 100% | 0d → none |
| 80 | Caso de uso de administrador | 2017-06-01 17:00 A | 2017-06-01 19:00 A |  | 0% → 100% | 0d → none |
| 81 | **Diseño** | 2017-06-02 09:00 A | 2017-06-02 16:00 A |  | 0% → 100% | 0d → none |
| 82 | Elaborar documento de diseño | 2017-06-02 09:00 A | 2017-06-02 12:00 A |  | 0% → 100% | 0d → none |
| 83 | Matriz de trazabilidad de requerimientos (Actualizada) | 2017-06-02 12:00 A | 2017-06-02 13:00 A |  | 0% → 100% | 0d → none |
| 84 | Traspaso de informacion | 2017-06-02 15:00 A | 2017-06-02 16:00 A |  | 0% → 100% | 0d → none |
| 85 | **Construccion** |  |  | 10d? → 10d | 19% → 27% |  |
| 86 | Matriz de trazabilidad de requerimientos (Actualizada) | 2017-06-02 16:00 A | 2017-06-05 16:00 A | 1d? → 1d | 0% → 100% |  |
| 102 | **Pruebas generales** |  |  | 2.25d? → 2.25d | 12% → 45% | 19.19d → 0d |
| 103 | Matriz de trazabilidad de requerimientos (Final) | 2017-06-16 16:00 A |  | 1d? → 1d | 0% → 73% |  |
| 104 | **Documento de pruebas Funcionales** |  |  |  | 33% → 65% | 19.19d → 0d |
| 106 | Modulo distribuidor | 2017-06-19 09:00 A |  |  | 0% → 95% | 19.19d → 0d |
| 112 | **Implementacion** | 2017-06-20 18:00 A |  |  | 0% → 43% |  |
| 113 | Software producido (Final) | 2017-06-20 18:00 A |  |  | 0% → 20% | 19.19d → 0.3d |
| 114 | Manual de usuario | 2017-06-21 12:00 A |  |  | 0% → 60% |  |
| 115 | **Despliegue** | 2017-06-20 18:00 A |  |  | 0% → 46% |  |
| 116 | Manual de pase a produccion | 2017-06-20 18:00 A |  |  | 0% → 40% | 19.31d → 0.25d |
| 117 | Manual de instalacion | 2017-06-21 11:00 A |  |  | 0% → 50% |  |
| 122 | **Procesamiento de Aseguramiento de la calidad de proyecto** |  | 2017-07-11 19:00 → 2017-07-11 18:00 A | 0.38d → 0.25d | 33% → 100% | -0.25d → none |
| 125 | **Segunda revision** | 2017-07-11 17:00 A | 2017-07-11 18:00 A |  | 0% → 100% | -38d → none |
| 126 | Elaboracion de CheckList | 2017-07-11 17:00 A | 2017-07-11 18:00 A |  | 0% → 100% | -38d → none |
| 127 | **Reuniones Internas** |  | 2017-07-18 10:00 A |  | 67% → 100% | 0d → none |
| 136 | **reunion quincenal 5** | 2017-07-14 09:00 A | 2017-07-14 10:00 A |  | 0% → 100% |  |
| 137 | Acta de reunion | 2017-07-14 09:00 A | 2017-07-14 10:00 A |  | 0% → 100% | 0d → none |
| 138 | **reunion quincenal 6** | 2017-07-18 09:00 A | 2017-07-18 10:00 A |  | 0% → 100% |  |
| 139 | Acta de reunion | 2017-07-18 09:00 A | 2017-07-18 10:00 A |  | 0% → 100% | 0d → none |
| 140 | **Reuniones externas** |  | 2017-07-19 09:30 A |  | 67% → 100% | 0d → none |
| 145 | **tercera reunion** | 2017-07-19 09:00 A | 2017-07-19 09:30 A |  | 0% → 100% |  |
| 146 | Acta de reunion y obbservaciones | 2017-07-19 09:00 A | 2017-07-19 09:30 A |  | 0% → 100% | 0d → none |
